Schedule from MS Project, 2017-09-27 to 2018-01-28, costs in ¥, A marks actual dates.
Microsoft

## Calendars

- 标准: Mon-Fri 08:00-12:00, 13:00-17:00; Sat-Sun off. Exceptions (off unless hours are given): 2017-10-13 to 2018-01-17 08:00-12:00, 13:00-17:00 (周六加班, recurring), 2017-10-13 to 2018-01-17 08:00-12:00, 13:00-17:00 (周天加班).

## Resources

| Resource | Rate |
| --- | --- |
| 葛倍良 | 30.97 |
| 黄鹏羽 | 30.97 |
| 金浩楠 | 30.97 |
| 余倩 | 30.97 |
| 周雨璐 | 30.97 |

## Schedule

| ID | WBS | Task | Type | Duration | Start | Finish | Predecessors | Complete | Actual start | Actual finish | Constraint | Resources | Work | Actual work | Cost | Actual cost | 负责人 |
| --- | --- | --- | --- | --- | --- | --- | --- | --- | --- | --- | --- | --- | --- | --- | --- | --- | --- |
| 1 | 1 | **项目准备阶段** |  | 16.38ed | 2017-09-27 09:00 | 2017-10-13 18:00 |  | 100% | 2017-09-29 09:00 | 2017-10-13 14:00 |  |  | 37h | 37h | 1,145.89 | 1,145.89 | 葛倍良 |
| 2 | 1.1 | 第一周小组会议 | manual | 1h | 2017-09-29 09:00 A | 2017-09-29 10:00 A |  | 100% |  |  |  | 葛倍良 [20%]; 黄鹏羽 [20%]; 金浩楠 [20%]; 余倩 [20%]; 周雨璐 [20%] | 5h | 5h | 154.85 | 154.85 |  |
| 3 | 1.2 | 项目任务确定 | manual | 0.04ed | 2017-10-11 09:00 A | 2017-10-11 10:00 A | 2 | 100% |  |  |  | 葛倍良 | 1h | 1h | 30.97 | 30.97 |  |
| 4 | 1.3 | 准备项目所需工具 | manual | 0.46ed | 2017-10-11 09:00 A | 2017-10-11 20:00 A | 3 | 100% |  |  |  | 葛倍良 [20%]; 黄鹏羽 [20%]; 金浩楠 [20%]; 余倩 [20%]; 周雨璐 [20%] | 6h | 6h | 185.82 | 185.82 |  |
| 5 | 1.4 | 文档书写与PPT制作 | manual | 0.08ed | 2017-10-12 09:00 A | 2017-10-12 11:00 A | 4 | 100% |  |  |  | 葛倍良 [20%]; 黄鹏羽 [20%]; 金浩楠 [20%]; 余倩 [20%]; 周雨璐 [20%] | 10h | 10h | 309.7 | 309.7 |  |
| 6 | 1.5 | 第三周第一次小组会议 | manual | 1h | 2017-10-12 09:00 A | 2017-10-12 10:00 A | 5 | 100% |  |  |  | 葛倍良 [20%]; 黄鹏羽 [20%]; 金浩楠 [20%]; 余倩 [20%]; 周雨璐 [20%] | 5h | 5h | 154.85 | 154.85 |  |
| 7 | 1.6 | 可行性分析报告 | milestone, manual | 0.25d | 2017-10-13 09:00 A | 2017-10-14 08:02 A | 6 | 100% |  |  | finish no earlier than 2017-10-13 18:00 | 葛倍良; 金浩楠; 余倩; 周雨璐 | 8h | 8h | 247.76 | 247.76 |  |
| 8 | 1.7 | 项目章程 | milestone, manual | 2h | 2017-10-13 11:00 A | 2017-10-13 14:00 A | 7 | 100% |  |  |  | 余倩 | 2h | 2h | 61.94 | 61.94 |  |
| 9 | 2 | **项目计划阶段** |  | 9d | 2017-10-14 09:00 A | 2017-10-22 18:00 | 8 | 100% |  | 2017-10-20 14:00 |  |  | 14h | 14h | 433.58 | 433.58 | 葛倍良 |
| 10 | 2.1 | 第三周第二次小组会议 | manual | 1h | 2017-10-14 09:00 A | 2017-10-14 10:00 A | 8 | 100% |  |  |  | 葛倍良 [20%]; 黄鹏羽 [20%]; 金浩楠 [20%]; 余倩 [20%]; 周雨璐 [20%] | 1h | 1h | 30.97 | 30.97 |  |
| 11 | 2.2 | 第四周小组会议 | manual | 1h | 2017-10-19 09:00 A | 2017-10-19 10:00 A | 10 | 100% |  |  |  | 葛倍良 [20%]; 黄鹏羽 [20%]; 金浩楠 [20%]; 余倩 [20%]; 周雨璐 [20%] | 1h | 1h | 30.97 | 30.97 |  |
| 12 | 2.3 | OBS | manual | 0.25d | 2017-10-20 09:00 A | 2017-10-20 11:00 A | 11 | 100% |  |  | start no earlier than 2017-10-20 09:00 | 黄鹏羽 | 2h | 2h | 61.94 | 61.94 |  |
| 13 | 2.4 | WBS | manual | 0.25d | 2017-10-20 09:00 A | 2017-10-20 11:00 A | 12 | 100% |  |  |  | 黄鹏羽 | 2h | 2h | 61.94 | 61.94 |  |
| 14 | 2.5 | 甘特图 | manual | 0.5d | 2017-10-20 09:00 A | 2017-10-20 14:00 A | 13 | 100% |  |  |  | 黄鹏羽 | 4h | 4h | 123.88 | 123.88 |  |
| 15 | 2.6 | 项目总体计划书 | milestone, manual | 4h | 2017-10-20 09:00 A | 2017-10-20 14:00 A | 14 | 100% |  |  | start no earlier than 2017-10-20 09:00 | 葛倍良 [20%]; 黄鹏羽 [20%]; 金浩楠 [20%]; 余倩 [20%]; 周雨璐 [20%] | 4h | 4h | 123.88 | 123.88 |  |
| 16 | 3 | **制定需求工程项目计划** |  | 80.38ed | 2017-10-25 09:00 A | 2018-01-13 18:00 | 15 | 100% |  | 2018-01-08 10:00 |  |  | 200.84h | 200.84h | 6,220.15 | 6,220.15 | 葛倍良 |
| 17 | 3.1 | **需求开发** |  | 60.38ed | 2017-10-25 09:00 A | 2017-12-24 18:00 | 15 | 100% |  | 2017-12-24 12:00 |  |  | 180.04h | 180.04h | 5,575.97 | 5,575.97 |  |
| 18 | 3.1.1 | **需求获取** |  | 60.38ed | 2017-10-25 09:00 A | 2017-12-24 18:00 | 15 | 100% |  | 2017-12-22 10:00 |  |  | 90.35h | 90.35h | 2,798.02 | 2,798.02 | 葛倍良 |
| 19 | 3.1.1.1 | 第五周第一次小组会议 | manual | 1h | 2017-10-25 09:00 A | 2017-10-25 10:00 A | 15 | 100% |  |  |  | 葛倍良 [20%]; 黄鹏羽 [20%]; 金浩楠 [20%]; 余倩 [20%]; 周雨璐 [20%] | 1h | 1h | 30.97 | 30.97 |  |
| 20 | 3.1.1.2 | 第五周第二次小组会议 | manual | 1h | 2017-10-27 09:00 A | 2017-10-27 10:00 A | 19 | 100% |  |  |  | 葛倍良 [20%]; 黄鹏羽 [20%]; 金浩楠 [20%]; 余倩 [20%]; 周雨璐 [20%] | 1h | 1h | 30.97 | 30.97 |  |
| 21 | 3.1.1.3 | 确定需求开发过程 | manual | 1h | 2017-11-02 09:00 A | 2017-11-02 10:00 A | 20 | 100% |  |  | start no earlier than 2017-11-02 09:00 | 葛倍良 | 1h | 1h | 30.97 | 30.97 |  |
| 22 | 3.1.1.4 | 编写项目视图与范围 |  | 1h | 2017-11-03 09:00 A | 2017-11-03 10:00 A | 21 | 100% |  |  |  | 金浩楠 [50%]; 周雨璐 [50%] | 2h | 2h | 61.94 | 61.94 |  |
| 23 | 3.1.1.5 | 用户群分类 | manual | 1h | 2017-11-03 09:00 A | 2017-11-03 10:00 A | 22 | 100% |  |  | start no earlier than 2017-11-03 09:00 | 黄鹏羽 | 1h | 1h | 30.97 | 30.97 |  |
| 24 | 3.1.1.6 | 需求工程项目评审 | manual | 1h | 2017-11-03 09:00 A | 2017-11-03 10:00 A | 23 | 100% |  |  |  | 葛倍良; 黄鹏羽; 金浩楠; 余倩; 周雨璐 | 5h | 5h | 154.85 | 154.85 |  |
| 25 | 3.1.1.7 | 第六周小组会议 | manual | 1h | 2017-11-04 09:00 A | 2017-11-04 10:00 A | 24 | 100% |  |  |  | 葛倍良 [20%]; 黄鹏羽 [20%]; 金浩楠 [20%]; 周雨璐 [20%]; 余倩 [20%] | 4h | 4h | 123.88 | 123.88 |  |
| 26 | 3.1.1.8 | 项目发起人访谈 | manual | 1h | 2017-11-05 09:00 A | 2017-11-05 10:00 A | 25 | 100% |  |  |  | 葛倍良; 黄鹏羽; 金浩楠; 周雨璐 | 4h | 4h | 123.88 | 123.88 |  |
| 27 | 3.1.1.9 | 第七周小组会议 | manual | 1h | 2017-11-08 09:00 A | 2017-11-08 10:00 A | 26 | 100% |  |  |  | 葛倍良 [20%]; 黄鹏羽 [20%]; 金浩楠 [20%]; 余倩 [20%]; 周雨璐 [20%] | 5h | 5h | 154.85 | 154.85 |  |
| 28 | 3.1.1.10 | 项目发起人二次访谈 | manual | 1h | 2017-11-09 09:00 A | 2017-11-09 10:00 A | 27 | 100% |  |  |  | 葛倍良; 黄鹏羽; 金浩楠; 余倩; 周雨璐 | 5h | 5h | 154.85 | 154.85 |  |
| 29 | 3.1.1.11 | 选择产品代表 | manual | 1h | 2017-11-12 09:00 A | 2017-11-12 10:00 A | 28 | 100% |  |  | start no earlier than 2017-11-12 09:00 | 金浩楠 | 0.96h | 0.96h | 29.78 | 29.78 |  |
| 30 | 3.1.1.12 | 第八周小组会议 | manual | 1h | 2017-11-15 09:00 A | 2017-11-15 10:00 A | 29 | 100% |  |  |  | 葛倍良 [20%]; 黄鹏羽 [20%]; 金浩楠 [20%]; 余倩 [20%]; 周雨璐 [20%] | 5h | 5h | 154.85 | 154.85 |  |
| 31 | 3.1.1.13 | 教师用户代表访谈 | manual | 1h | 2017-11-16 09:00 A | 2017-11-16 10:00 A | 30 | 100% |  |  |  | 葛倍良; 黄鹏羽; 金浩楠; 余倩; 周雨璐 | 5h | 5h | 154.85 | 154.85 |  |
| 32 | 3.1.1.14 | 建立核心队伍 | manual | 1h | 2017-11-17 09:00 A | 2017-11-17 10:00 A | 31 | 100% |  |  |  | 葛倍良 | 1h | 1h | 30.97 | 30.97 |  |
| 33 | 3.1.1.15 | 第九周第一次小组会议 | manual | 1h | 2017-11-20 09:00 A | 2017-11-20 10:00 A | 32 | 100% |  |  |  | 葛倍良 [20%]; 黄鹏羽 [20%]; 金浩楠 [20%]; 余倩 [20%]; 周雨璐 [20%] | 1h | 1h | 30.97 | 30.97 |  |
| 34 | 3.1.1.16 | 教师用户代表二次访谈 | manual | 0.5h | 2017-11-23 09:00 A | 2017-11-23 09:30 A | 33 | 100% |  |  |  | 葛倍良; 黄鹏羽; 金浩楠; 余倩; 周雨璐 | 2.5h | 2.5h | 77.42 | 77.42 |  |
| 35 | 3.1.1.17 | 第九周第二次小组会议 | manual | 1h | 2017-11-25 09:00 A | 2017-11-25 10:00 A | 34 | 100% |  |  |  | 葛倍良 [20%]; 黄鹏羽 [20%]; 金浩楠 [20%]; 余倩 [20%]; 周雨璐 [20%] | 5h | 5h | 154.85 | 154.85 |  |
| 36 | 3.1.1.18 | 确定使用实例 | manual | 1h | 2017-11-25 09:00 A | 2017-11-25 10:00 A | 35 | 100% |  |  |  | 余倩 | 0.96h | 0.96h | 29.78 | 29.78 |  |
| 37 | 3.1.1.19 | 第十周小组会议 | manual | 1h | 2017-12-02 09:00 A | 2017-12-02 10:00 A | 36 | 100% |  |  |  | 葛倍良 [20%]; 黄鹏羽 [20%]; 金浩楠 [20%]; 余倩 [20%]; 周雨璐 [20%] | 5h | 5h | 154.85 | 154.85 |  |
| 38 | 3.1.1.20 | 学生用户代表访谈 | manual | 1h | 2017-12-02 09:00 A | 2017-12-02 10:00 A | 37 | 100% |  |  |  | 葛倍良; 黄鹏羽; 金浩楠; 余倩; 周雨璐 | 5h | 5h | 154.85 | 154.85 |  |
| 39 | 3.1.1.21 | 游客用户代表访谈 | manual | 1h | 2017-12-03 09:00 A | 2017-12-03 10:00 A | 38 | 100% |  |  |  | 余倩; 周雨璐 | 2h | 2h | 61.94 | 61.94 |  |
| 40 | 3.1.1.22 | 第十二周小组会议 | manual | 1h | 2017-12-11 09:00 A | 2017-12-11 10:00 A | 39 | 100% |  |  |  | 葛倍良 [20%]; 黄鹏羽 [20%]; 金浩楠 [20%]; 余倩 [20%]; 周雨璐 [20%] | 5h | 5h | 154.85 | 154.85 |  |
| 41 | 3.1.1.23 | 管理员代表第一次访谈 | manual | 1h | 2017-12-11 09:00 A | 2017-12-11 10:00 A | 40 | 100% |  |  |  | 葛倍良; 黄鹏羽; 金浩楠; 余倩; 周雨璐 | 5h | 5h | 154.85 | 154.85 |  |
| 42 | 3.1.1.24 | 第十三周小组会议 | manual | 1h | 2017-12-18 09:00 A | 2017-12-18 10:00 A | 41 | 100% |  |  |  | 葛倍良 [20%]; 黄鹏羽 [20%]; 金浩楠 [20%]; 余倩 [20%]; 周雨璐 [20%] | 5h | 5h | 154.85 | 154.85 |  |
| 43 | 3.1.1.25 | 管理员代表第二次访谈 | manual | 1h | 2017-12-18 09:00 A | 2017-12-18 10:00 A | 42 | 100% |  |  |  | 葛倍良; 黄鹏羽; 金浩楠; 余倩; 周雨璐 | 5h | 5h | 154.85 | 154.85 |  |
| 44 | 3.1.1.26 | 召开应用程序开发联系会议 | manual | 1h | 2017-12-18 10:00 A | 2017-12-18 11:00 A | 43 | 100% |  |  |  | 葛倍良; 黄鹏羽; 金浩楠; 余倩; 周雨璐 | 4.96h | 4.96h | 153.66 | 153.66 |  |
| 45 | 3.1.1.27 | 分析用户工作流程 | manual | 1h | 2017-12-21 09:00 A | 2017-12-21 10:00 A | 44 | 100% |  |  |  | 黄鹏羽 | 1h | 1h | 30.97 | 30.97 |  |
| 46 | 3.1.1.28 | 确定质量属性 | manual | 1h | 2017-12-21 10:00 A | 2017-12-21 11:00 A | 45 | 100% |  |  |  | 周雨璐 | 1h | 1h | 30.97 | 30.97 |  |
| 47 | 3.1.1.29 | 检查问题报告 | manual | 1h | 2017-12-22 09:00 A | 2017-12-22 10:00 A | 46 | 100% |  |  |  | 余倩 | 0.96h | 0.96h | 29.78 | 29.78 |  |

| ID | WBS | Task | Type | Duration | Start | Finish | Predecessors | Complete | Actual start | Actual finish | Constraint | Resources | Work | Actual work | Cost | Actual cost | 负责人 |
| --- | --- | --- | --- | --- | --- | --- | --- | --- | --- | --- | --- | --- | --- | --- | --- | --- | --- |
| 48 | 3.1.2 | **需求分析** |  | 48.38ed | 2017-11-06 09:00 | 2017-12-24 18:00 | 15 | 100% | 2017-11-06 11:00 | 2017-12-23 10:00 |  |  | 38.7h | 38.7h | 1,198.48 | 1,198.48 | 葛倍良 |
| 49 | 3.1.2.1 | 绘制关联图 | manual | 1h | 2017-11-06 11:00 A | 2017-11-06 12:00 A | 22 | 100% |  |  |  | 葛倍良 | 1h | 1h | 30.97 | 30.97 |  |
| 50 | 3.1.2.2 | 创建开发原型 |  | 30h | 2017-11-07 09:00 A | 2017-12-18 11:40 A | 49 | 100% |  |  | finish no earlier than 2017-12-16 18:00 | 余倩 [60%]; 葛倍良 [10%]; 黄鹏羽 [20%]; 金浩楠 [10%] | 16.67h | 16.67h | 516.17 | 516.17 |  |
| 51 | 3.1.2.3 | 确定需求优先级 |  | 1h | 2017-11-18 09:00 A | 2017-11-18 10:00 A | 50 | 100% |  |  | start no earlier than 2017-11-08 09:00 | 周雨璐; 金浩楠 | 2h | 2h | 61.94 | 61.94 |  |
| 52 | 3.1.2.4 | 为需求建立模型 |  | 6h | 2017-11-25 09:00 A | 2017-12-21 18:00 A | 51 | 100% |  |  | finish no earlier than 2017-12-21 18:00 | 黄鹏羽; 金浩楠; 葛倍良 | 17h | 17h | 526.49 | 526.49 |  |
| 53 | 3.1.2.5 | 编写数据字典 |  | 2h | 2017-12-01 09:00 A | 2017-12-16 18:00 A | 52 | 100% |  |  | finish no earlier than 2017-12-16 18:00 | 葛倍良; 黄鹏羽 | 0.03h | 0.03h | 0.98 | 0.98 |  |
| 54 | 3.1.2.6 | 应用质量功能调配 |  | 1h | 2017-12-23 09:00 A | 2017-12-23 10:00 A | 53 | 100% |  |  | start no earlier than 2017-12-23 09:00 | 余倩; 周雨璐 | 2h | 2h | 61.94 | 61.94 |  |
| 55 | 3.1.3 | **需求规格说明** |  | 35.38ed | 2017-11-19 09:00 | 2017-12-24 18:00 | 15 | 100% | 2017-11-25 09:00 | 2017-12-24 12:00 |  |  | 29h | 29h | 898.13 | 898.13 | 葛倍良 |
| 56 | 3.1.3.1 | 采用软件需求规格说明模板 |  | 2h | 2017-11-25 09:00 A | 2017-11-25 11:00 A | 36 | 100% |  |  | start no earlier than 2017-11-25 09:00 | 葛倍良 | 2h | 2h | 61.94 | 61.94 |  |
| 57 | 3.1.3.2 | 指明需求来源 |  | 1h | 2017-12-01 09:00 A | 2017-12-01 10:00 A | 56 | 100% |  |  | start no earlier than 2017-12-01 09:00 | 黄鹏羽 | 1h | 1h | 30.97 | 30.97 |  |
| 58 | 3.1.3.3 | 记录业务规范 |  | 2h | 2017-12-01 09:00 A | 2017-12-01 11:00 A | 57 | 100% |  |  | start no earlier than 2017-11-17 09:00 | 周雨璐 | 2h | 2h | 61.94 | 61.94 |  |
| 59 | 3.1.3.4 | 为每一需求注上标号 |  | 1h | 2017-12-07 09:00 A | 2017-12-07 10:00 A | 58 | 100% |  |  | start no earlier than 2017-12-07 09:00 | 余倩 | 1h | 1h | 30.97 | 30.97 |  |
| 60 | 3.1.3.5 | 创建需求跟踪能力矩阵 |  | 3h | 2017-12-24 09:00 A | 2017-12-24 12:00 A | 59 | 100% |  |  | start no earlier than 2017-12-24 09:00 | 葛倍良 | 3h | 3h | 92.91 | 92.91 |  |
| 61 | 3.1.3.6 | 发布SRS | milestone, manual | 3h | 2017-12-15 09:00 A | 2017-12-15 12:00 A | 56 | 100% |  |  |  | 葛倍良; 黄鹏羽; 金浩楠; 余倩; 周雨璐 | 15h | 15h | 464.55 | 464.55 |  |
| 62 | 3.1.3.7 | 第十三周第二次小组会议(组内评审SRS) | manual | 1h | 2017-12-22 09:00 A | 2017-12-22 10:00 A | 61 | 100% |  |  |  | 葛倍良 [20%]; 黄鹏羽 [20%]; 金浩楠 [20%]; 余倩 [20%]; 周雨璐 [20%] | 5h | 5h | 154.85 | 154.85 |  |
| 63 | 3.1.4 | **需求规格审核** |  | 22d | 2017-12-03 09:00 | 2017-12-24 18:00 | 15 | 100% | 2017-12-10 09:00 | 2017-12-24 11:00 |  |  | 22h | 22h | 681.34 | 681.34 | 葛倍良 |
| 64 | 3.1.4.1 | 审查需求文档 |  | 2h | 2017-12-20 09:00 A | 2017-12-20 11:00 A | 61 | 100% |  |  | start no earlier than 2017-12-20 09:00 | 葛倍良 | 2h | 2h | 61.94 | 61.94 |  |
| 65 | 3.1.4.2 | 编写测试用例 |  | 4h | 2017-12-10 09:00 A | 2017-12-17 18:00 A | 52 | 100% |  |  | finish no earlier than 2017-12-17 18:00 | 黄鹏羽; 金浩楠; 周雨璐 | 12h | 12h | 371.64 | 371.64 |  |
| 66 | 3.1.4.3 | 编写用户手册 |  | 6h | 2017-12-18 13:00 A | 2017-12-19 10:00 A | 50 | 100% |  |  | finish no earlier than 2017-12-18 18:00 | 余倩 | 6h | 6h | 185.82 | 185.82 |  |
| 67 | 3.1.4.4 | 确定合格的标准 |  | 2h | 2017-12-24 09:00 A | 2017-12-24 11:00 A | 66 | 100% |  |  | start no earlier than 2017-12-24 09:00 | 葛倍良 [20%]; 黄鹏羽 [20%]; 金浩楠 [20%]; 余倩 [20%]; 周雨璐 [20%] | 2h | 2h | 61.94 | 61.94 |  |
| 68 | 3.2 | **需求管理** |  | 19.38ed | 2017-12-25 09:00 A | 2018-01-13 18:00 | 66 | 100% |  | 2018-01-08 10:00 |  |  | 20.8h | 20.8h | 644.18 | 644.18 | 葛倍良 |
| 69 | 3.2.1 | 确定变更控制过程 |  | 2h | 2017-12-25 09:00 A | 2017-12-25 11:00 A | 67 | 100% |  |  |  | 葛倍良 | 2h | 2h | 61.94 | 61.94 |  |
| 70 | 3.2.2 | 建立变更控制委员会 |  | 2h | 2017-12-25 11:00 A | 2017-12-25 14:00 A | 69 | 100% |  |  |  | 葛倍良 [20%]; 黄鹏羽 [20%]; 金浩楠 [20%]; 余倩 [20%]; 周雨璐 [20%] | 2h | 2h | 61.94 | 61.94 |  |
| 71 | 3.2.3 | 使用需求管理工具 | manual | 1h | 2018-01-01 09:00 A | 2018-01-01 10:00 A | 70 | 100% |  |  |  | 葛倍良 | 1h | 1h | 30.97 | 30.97 |  |
| 72 | 3.2.4 | 第十五周小组会议 | manual | 1h | 2018-01-04 09:00 A | 2018-01-04 10:00 A | 71 | 100% |  |  |  | 葛倍良 [20%]; 黄鹏羽 [20%]; 金浩楠 [20%]; 余倩 [20%]; 周雨璐 [20%] | 5h | 5h | 154.85 | 154.85 |  |
| 73 | 3.2.5 | 进行变更影响分析 |  | 2h | 2018-01-04 09:00 A | 2018-01-04 11:00 A | 72 | 100% |  |  | start no earlier than 2018-01-01 09:00 | 葛倍良 | 0.4h | 0.4h | 12.39 | 12.39 |  |
| 74 | 3.2.6 | 跟踪每一项变更 |  | 2h | 2018-01-04 14:00 A | 2018-01-04 16:00 A | 73 | 100% |  |  | start no earlier than 2017-12-06 09:00 | 金浩楠 | 2h | 2h | 61.94 | 61.94 |  |
| 75 | 3.2.7 | 编写需求文档的标准版本和控制版本 |  | 2h | 2018-01-04 16:00 A | 2018-01-05 09:00 A | 74 | 100% |  |  | start no earlier than 2017-12-07 09:00 | 葛倍良 | 0.4h | 0.4h | 12.39 | 12.39 |  |
| 76 | 3.2.8 | 维护变更历史记录 |  | 1h | 2018-01-06 09:00 A | 2018-01-06 11:00 A | 75 | 100% |  |  | start no earlier than 2018-01-06 09:00 | 葛倍良 | 1h | 1h | 30.97 | 30.97 |  |
| 77 | 3.2.9 | 跟踪需求状态 |  | 1h | 2018-01-06 10:00 A | 2018-01-06 11:00 A | 76 | 100% |  |  | start no earlier than 2017-12-11 09:00 | 周雨璐 | 1h | 1h | 30.97 | 30.97 |  |
| 78 | 3.2.10 | 衡量需求稳定性 |  | 1h | 2018-01-07 09:00 A | 2018-01-07 10:00 A | 77 | 100% |  |  | start no earlier than 2017-12-12 09:00 | 金浩楠 | 1h | 1h | 30.97 | 30.97 |  |
| 79 | 3.2.11 | 第十六周小组会议(组内评审需求变更文档) | manual | 1h | 2018-01-08 09:00 A | 2018-01-08 10:00 A | 78 | 100% |  |  |  | 葛倍良; 黄鹏羽; 金浩楠; 余倩; 周雨璐 | 5h | 5h | 154.85 | 154.85 |  |

| ID | WBS | Task | Type | Duration | Start | Finish | Predecessors | Resources | Work | Cost | 负责人 |
| --- | --- | --- | --- | --- | --- | --- | --- | --- | --- | --- | --- |
| 80 | 4 | **项目收尾阶段** |  | 13.38ed | 2018-01-15 09:00 | 2018-01-28 18:00 | 7, 14, 46, 53, 56, 66, 79 |  | 10h | 309.7 | 葛倍良 |
| 81 | 4.1 | 项目总结报告文档 | manual | 4h | 2018-01-15 09:00 | 2018-01-15 14:00 | 79 | 葛倍良 [20%]; 黄鹏羽 [20%]; 金浩楠 [20%]; 余倩 [20%]; 周雨璐 [20%] | 4h | 123.88 |  |
| 82 | 4.2 | 经验总结 | manual | 1h | 2018-01-16 09:00 | 2018-01-16 10:00 | 81 | 葛倍良 [20%]; 黄鹏羽 [20%]; 金浩楠 [20%]; 余倩 [20%]; 周雨璐 [20%] | 1h | 30.97 |  |
| 83 | 4.3 | 答辩与评价 | manual | 5h | 2018-01-18 09:00 | 2018-01-18 15:00 | 82 | 葛倍良 [20%]; 黄鹏羽 [20%]; 金浩楠 [20%]; 余倩 [20%]; 周雨璐 [20%] | 5h | 154.85 |  |
